# Airfield Apron Reconstruction, Phased

Schedule from Primavera P6, 2027-03-01 to 2028-03-08, data date 2027-03-01.

## Calendars

- 5-day x 8h: Mon-Fri 08:00-16:00; Sat-Sun off.

## Schedule

| ID | WBS | Activity | Type | Duration | Start | Finish | Predecessors | Total float |
| --- | --- | --- | --- | --- | --- | --- | --- | --- |
|  | 01 | **Milestones** |  |  | 2027-03-01 | 2028-03-08 |  |  |
| MS000 |  | Notice to Proceed | milestone | 0d | 2027-03-01 | 2027-03-01 |  | 0d |
| MS999 |  | Apron reconstruction complete | milestone | 0d | 2028-03-08 | 2028-03-08 | P6O | 0d |
|  | 02 | **Approvals** |  |  | 2027-03-01 | 2027-04-23 |  |  |
| EN100 |  | Phasing plan, safety plan & airfield approvals |  | 25d | 2027-03-01 | 2027-04-02 | MS000 | 0d |
| EN110 |  | Concrete mix design & test strip |  | 15d | 2027-04-05 | 2027-04-23 | EN100 | 0d |
|  | 03 | **Phase 1** |  |  | 2027-04-26 | 2027-06-16 |  |  |
| P1C |  | Phase 1: relocate aircraft, close & barricade area |  | 2d | 2027-04-26 | 2027-04-27 | EN110 | 0d |
| P1D |  | Phase 1: break out & remove old pavement |  | 8d | 2027-04-28 | 2027-05-07 | P1C | 0d |
| P1S |  | Phase 1: subgrade repair & cement-treated base |  | 8d | 2027-05-10 | 2027-05-19 | P1D | 0d |
| P1P |  | Phase 1: slip-form concrete paving (6 lanes) |  | 9d | 2027-05-20 | 2027-06-01 | P1S | 0d |
| P1J |  | Phase 1: cure, saw-cut & seal joints |  | 7d | 2027-06-02 | 2027-06-10 | P1P | 0d |
| P1M |  | Phase 1: markings & lighting |  | 3d | 2027-06-11 | 2027-06-15 | P1J | 0d |
| P1O |  | Phase 1: inspection, reopen & return aircraft |  | 1d | 2027-06-16 | 2027-06-16 | P1M | 0d |
|  | 04 | **Phase 2** |  |  | 2027-06-17 | 2027-08-09 |  |  |
| P2C |  | Phase 2: relocate aircraft, close & barricade area |  | 2d | 2027-06-17 | 2027-06-18 | P1O | 0d |
| P2D |  | Phase 2: break out & remove old pavement |  | 8d | 2027-06-21 | 2027-06-30 | P2C | 0d |
| P2S |  | Phase 2: subgrade repair & cement-treated base |  | 8d | 2027-07-01 | 2027-07-12 | P2D | 0d |
| P2P |  | Phase 2: slip-form concrete paving (6 lanes) |  | 9d | 2027-07-13 | 2027-07-23 | P2S | 0d |
| P2J |  | Phase 2: cure, saw-cut & seal joints |  | 7d | 2027-07-26 | 2027-08-03 | P2P | 0d |
| P2M |  | Phase 2: markings & lighting |  | 3d | 2027-08-04 | 2027-08-06 | P2J | 0d |
| P2O |  | Phase 2: inspection, reopen & return aircraft |  | 1d | 2027-08-09 | 2027-08-09 | P2M | 0d |
|  | 05 | **Phase 3** |  |  | 2027-08-10 | 2027-09-30 |  |  |
| P3C |  | Phase 3: relocate aircraft, close & barricade area |  | 2d | 2027-08-10 | 2027-08-11 | P2O | 0d |
| P3D |  | Phase 3: break out & remove old pavement |  | 8d | 2027-08-12 | 2027-08-23 | P3C | 0d |
| P3S |  | Phase 3: subgrade repair & cement-treated base |  | 8d | 2027-08-24 | 2027-09-02 | P3D | 0d |
| P3P |  | Phase 3: slip-form concrete paving (6 lanes) |  | 9d | 2027-09-03 | 2027-09-15 | P3S | 0d |
| P3J |  | Phase 3: cure, saw-cut & seal joints |  | 7d | 2027-09-16 | 2027-09-24 | P3P | 0d |
| P3M |  | Phase 3: markings & lighting |  | 3d | 2027-09-27 | 2027-09-29 | P3J | 0d |
| P3O |  | Phase 3: inspection, reopen & return aircraft |  | 1d | 2027-09-30 | 2027-09-30 | P3M | 0d |

| ID | WBS | Activity | Duration | Start | Finish | Predecessors | Total float |
| --- | --- | --- | --- | --- | --- | --- | --- |
|  | 06 | **Phase 4** |  | 2027-10-01 | 2027-11-23 |  |  |
| P4C |  | Phase 4: relocate aircraft, close & barricade area | 2d | 2027-10-01 | 2027-10-04 | P3O | 0d |
| P4D |  | Phase 4: break out & remove old pavement | 8d | 2027-10-05 | 2027-10-14 | P4C | 0d |
| P4S |  | Phase 4: subgrade repair & cement-treated base | 8d | 2027-10-15 | 2027-10-26 | P4D | 0d |
| P4P |  | Phase 4: slip-form concrete paving (6 lanes) | 9d | 2027-10-27 | 2027-11-08 | P4S | 0d |
| P4J |  | Phase 4: cure, saw-cut & seal joints | 7d | 2027-11-09 | 2027-11-17 | P4P | 0d |
| P4M |  | Phase 4: markings & lighting | 3d | 2027-11-18 | 2027-11-22 | P4J | 0d |
| P4O |  | Phase 4: inspection, reopen & return aircraft | 1d | 2027-11-23 | 2027-11-23 | P4M | 0d |
|  | 07 | **Phase 5** |  | 2027-11-24 | 2028-01-14 |  |  |
| P5C |  | Phase 5: relocate aircraft, close & barricade area | 2d | 2027-11-24 | 2027-11-25 | P4O | 0d |
| P5D |  | Phase 5: break out & remove old pavement | 8d | 2027-11-26 | 2027-12-07 | P5C | 0d |
| P5S |  | Phase 5: subgrade repair & cement-treated base | 8d | 2027-12-08 | 2027-12-17 | P5D | 0d |
| P5P |  | Phase 5: slip-form concrete paving (6 lanes) | 9d | 2027-12-20 | 2027-12-30 | P5S | 0d |
| P5J |  | Phase 5: cure, saw-cut & seal joints | 7d | 2027-12-31 | 2028-01-10 | P5P | 0d |
| P5M |  | Phase 5: markings & lighting | 3d | 2028-01-11 | 2028-01-13 | P5J | 0d |
| P5O |  | Phase 5: inspection, reopen & return aircraft | 1d | 2028-01-14 | 2028-01-14 | P5M | 0d |
|  | 08 | **Phase 6** |  | 2028-01-17 | 2028-03-08 |  |  |
| P6C |  | Phase 6: relocate aircraft, close & barricade area | 2d | 2028-01-17 | 2028-01-18 | P5O | 0d |
| P6D |  | Phase 6: break out & remove old pavement | 8d | 2028-01-19 | 2028-01-28 | P6C | 0d |
| P6S |  | Phase 6: subgrade repair & cement-treated base | 8d | 2028-01-31 | 2028-02-09 | P6D | 0d |
| P6P |  | Phase 6: slip-form concrete paving (6 lanes) | 9d | 2028-02-10 | 2028-02-22 | P6S | 0d |
| P6J |  | Phase 6: cure, saw-cut & seal joints | 7d | 2028-02-23 | 2028-03-02 | P6P | 0d |
| P6M |  | Phase 6: markings & lighting | 3d | 2028-03-03 | 2028-03-07 | P6J | 0d |
| P6O |  | Phase 6: inspection, reopen & return aircraft | 1d | 2028-03-08 | 2028-03-08 | P6M | 0d |
