# Live Airport Concourse: Restroom Refurbishment

Schedule from Primavera P6, 2027-01-04 to 2027-12-16, data date 2027-01-04.

## Calendars

- 5-day x 8h: Mon-Fri 08:00-16:00; Sat-Sun off.

## Schedule

| ID | WBS | Activity | Type | Duration | Start | Finish | Predecessors | Total float | Free float |
| --- | --- | --- | --- | --- | --- | --- | --- | --- | --- |
|  | 01 | **Milestones** |  |  | 2027-01-04 | 2027-12-16 |  |  |  |
| MS000 |  | Notice to Proceed | milestone | 0d | 2027-01-04 | 2027-01-04 |  | 0d |  |
| MS999 |  | All restroom blocks reopened | milestone | 0d | 2027-12-16 | 2027-12-16 | P6O | 0d |  |
|  | 02 | **Approvals & procurement** |  |  | 2027-01-04 | 2027-04-16 |  |  |  |
| EN100 |  | Design submittals & airport authority approvals |  | 30d | 2027-01-04 | 2027-02-12 | MS000 | 0d |  |
| PH000 |  | Temporary restroom trailers & wayfinding |  | 10d | 2027-02-15 | 2027-02-26 | EN100 | 35d | 0d |
| PR100 |  | Fixtures, partitions & tile: procure |  | 45d | 2027-02-15 | 2027-04-16 | EN100 | 0d |  |
|  | 03 | **Phase 1** |  |  | 2027-04-19 | 2027-05-27 |  |  |  |
| P1C |  | Phase 1: close blocks 1, 2 & set barricades |  | 1d | 2027-04-19 | 2027-04-19 | PR100, PH000 | 0d |  |
| P1D |  | Phase 1: demolition |  | 5d | 2027-04-20 | 2027-04-26 | P1C | 0d |  |
| P1M |  | Phase 1: plumbing & electrical rough-in |  | 8d | 2027-04-27 | 2027-05-06 | P1D | 0d |  |
| P1F |  | Phase 1: waterproofing, tile & partitions |  | 10d | 2027-05-07 | 2027-05-20 | P1M | 0d |  |
| P1X |  | Phase 1: fixtures & accessories |  | 4d | 2027-05-21 | 2027-05-26 | P1F | 0d |  |
| P1O |  | Phase 1: inspection & reopen to passengers |  | 1d | 2027-05-27 | 2027-05-27 | P1X | 0d |  |
|  | 04 | **Phase 2** |  |  | 2027-05-28 | 2027-07-07 |  |  |  |
| P2C |  | Phase 2: close blocks 3, 4 & set barricades |  | 1d | 2027-05-28 | 2027-05-28 | PR100, PH000, P1O | 0d |  |
| P2D |  | Phase 2: demolition |  | 5d | 2027-05-31 | 2027-06-04 | P2C | 0d |  |
| P2M |  | Phase 2: plumbing & electrical rough-in |  | 8d | 2027-06-07 | 2027-06-16 | P2D | 0d |  |
| P2F |  | Phase 2: waterproofing, tile & partitions |  | 10d | 2027-06-17 | 2027-06-30 | P2M | 0d |  |
| P2X |  | Phase 2: fixtures & accessories |  | 4d | 2027-07-01 | 2027-07-06 | P2F | 0d |  |
| P2O |  | Phase 2: inspection & reopen to passengers |  | 1d | 2027-07-07 | 2027-07-07 | P2X | 0d |  |
|  | 05 | **Phase 3** |  |  | 2027-07-08 | 2027-08-17 |  |  |  |
| P3C |  | Phase 3: close blocks 5, 6 & set barricades |  | 1d | 2027-07-08 | 2027-07-08 | PR100, PH000, P2O | 0d |  |
| P3D |  | Phase 3: demolition |  | 5d | 2027-07-09 | 2027-07-15 | P3C | 0d |  |
| P3M |  | Phase 3: plumbing & electrical rough-in |  | 8d | 2027-07-16 | 2027-07-27 | P3D | 0d |  |
| P3F |  | Phase 3: waterproofing, tile & partitions |  | 10d | 2027-07-28 | 2027-08-10 | P3M | 0d |  |
| P3X |  | Phase 3: fixtures & accessories |  | 4d | 2027-08-11 | 2027-08-16 | P3F | 0d |  |
| P3O |  | Phase 3: inspection & reopen to passengers |  | 1d | 2027-08-17 | 2027-08-17 | P3X | 0d |  |

| ID | WBS | Activity | Duration | Start | Finish | Predecessors | Total float |
| --- | --- | --- | --- | --- | --- | --- | --- |
|  | 06 | **Phase 4** |  | 2027-08-18 | 2027-09-27 |  |  |
| P4C |  | Phase 4: close blocks 7, 8 & set barricades | 1d | 2027-08-18 | 2027-08-18 | PR100, PH000, P3O | 0d |
| P4D |  | Phase 4: demolition | 5d | 2027-08-19 | 2027-08-25 | P4C | 0d |
| P4M |  | Phase 4: plumbing & electrical rough-in | 8d | 2027-08-26 | 2027-09-06 | P4D | 0d |
| P4F |  | Phase 4: waterproofing, tile & partitions | 10d | 2027-09-07 | 2027-09-20 | P4M | 0d |
| P4X |  | Phase 4: fixtures & accessories | 4d | 2027-09-21 | 2027-09-24 | P4F | 0d |
| P4O |  | Phase 4: inspection & reopen to passengers | 1d | 2027-09-27 | 2027-09-27 | P4X | 0d |
|  | 07 | **Phase 5** |  | 2027-09-28 | 2027-11-05 |  |  |
| P5C |  | Phase 5: close blocks 9, 10 & set barricades | 1d | 2027-09-28 | 2027-09-28 | PR100, PH000, P4O | 0d |
| P5D |  | Phase 5: demolition | 5d | 2027-09-29 | 2027-10-05 | P5C | 0d |
| P5M |  | Phase 5: plumbing & electrical rough-in | 8d | 2027-10-06 | 2027-10-15 | P5D | 0d |
| P5F |  | Phase 5: waterproofing, tile & partitions | 10d | 2027-10-18 | 2027-10-29 | P5M | 0d |
| P5X |  | Phase 5: fixtures & accessories | 4d | 2027-11-01 | 2027-11-04 | P5F | 0d |
| P5O |  | Phase 5: inspection & reopen to passengers | 1d | 2027-11-05 | 2027-11-05 | P5X | 0d |
|  | 08 | **Phase 6** |  | 2027-11-08 | 2027-12-16 |  |  |
| P6C |  | Phase 6: close blocks 11, 12 & set barricades | 1d | 2027-11-08 | 2027-11-08 | PR100, PH000, P5O | 0d |
| P6D |  | Phase 6: demolition | 5d | 2027-11-09 | 2027-11-15 | P6C | 0d |
| P6M |  | Phase 6: plumbing & electrical rough-in | 8d | 2027-11-16 | 2027-11-25 | P6D | 0d |
| P6F |  | Phase 6: waterproofing, tile & partitions | 10d | 2027-11-26 | 2027-12-09 | P6M | 0d |
| P6X |  | Phase 6: fixtures & accessories | 4d | 2027-12-10 | 2027-12-15 | P6F | 0d |
| P6O |  | Phase 6: inspection & reopen to passengers | 1d | 2027-12-16 | 2027-12-16 | P6X | 0d |
