# Data Center Power Yard: 14 Modular Power Units

Schedule from Primavera P6, 2027-03-01 to 2027-09-08, data date 2027-03-01.

## Calendars

- 5-day x 8h: Mon-Fri 08:00-16:00; Sat-Sun off.

## Schedule

| ID | WBS | Activity | Type | Duration | Start | Finish | Predecessors | Total float | Free float |
| --- | --- | --- | --- | --- | --- | --- | --- | --- | --- |
|  | 01 | **Milestones** |  |  | 2027-03-01 | 2027-09-08 |  |  |  |
| MS000 |  | Notice to Proceed | milestone | 0d | 2027-03-01 | 2027-03-01 |  | 0d |  |
| MS999 |  | All 14 units energized | milestone | 0d | 2027-09-08 | 2027-09-08 | TS13 | 0d |  |
|  | 02 | **Procurement** |  |  | 2027-03-01 | 2027-07-02 |  |  |  |
| PR100 |  | Power modules: factory build & FAT (first 7) |  | 60d | 2027-03-01 | 2027-05-21 | MS000 | 0d |  |
| PR120 |  | Pad-mount transformers: fabricate & deliver |  | 55d | 2027-03-01 | 2027-05-14 | MS000 | 49d | 0d |
| PR110 |  | Power modules: factory build & FAT (last 7) |  | 30d | 2027-05-24 | 2027-07-02 | PR100 | 5d | 0d |
|  | 03 | **Civil** |  |  | 2027-03-01 | 2027-05-18 |  |  |  |
| CV100 |  | Site prep, fence & yard grading |  | 15d | 2027-03-01 | 2027-03-19 | MS000 | 42d | 0d |
| CV110 |  | MV cable trench & duct bank |  | 25d | 2027-03-22 | 2027-04-23 | CV100 | 66d | 0d |
| PD0 |  | Unit 01: piles & pad |  | 3d | 2027-03-22 | 2027-03-24 | CV100 | 42d | 0d |
| PD1 |  | Unit 02: piles & pad |  | 3d | 2027-03-25 | 2027-03-29 | CV100, PD0 | 44d | 0d |
| PD2 |  | Unit 03: piles & pad |  | 3d | 2027-03-30 | 2027-04-01 | CV100, PD1 | 46d | 0d |
| PD3 |  | Unit 04: piles & pad |  | 3d | 2027-04-02 | 2027-04-06 | CV100, PD2 | 48d | 0d |
| PD4 |  | Unit 05: piles & pad |  | 3d | 2027-04-07 | 2027-04-09 | CV100, PD3 | 50d | 0d |
| PD5 |  | Unit 06: piles & pad |  | 3d | 2027-04-12 | 2027-04-14 | CV100, PD4 | 52d | 0d |
| PD6 |  | Unit 07: piles & pad |  | 3d | 2027-04-15 | 2027-04-19 | CV100, PD5 | 54d | 0d |
| PD7 |  | Unit 08: piles & pad |  | 3d | 2027-04-20 | 2027-04-22 | CV100, PD6 | 56d | 0d |
| PD8 |  | Unit 09: piles & pad |  | 3d | 2027-04-23 | 2027-04-27 | CV100, PD7 | 58d | 0d |
| PD9 |  | Unit 10: piles & pad |  | 3d | 2027-04-28 | 2027-04-30 | CV100, PD8 | 60d | 0d |
| PD10 |  | Unit 11: piles & pad |  | 3d | 2027-05-03 | 2027-05-05 | CV100, PD9 | 62d | 0d |
| PD11 |  | Unit 12: piles & pad |  | 3d | 2027-05-06 | 2027-05-10 | CV100, PD10 | 64d | 0d |
| PD12 |  | Unit 13: piles & pad |  | 3d | 2027-05-11 | 2027-05-13 | CV100, PD11 | 66d | 0d |
| PD13 |  | Unit 14: piles & pad |  | 3d | 2027-05-14 | 2027-05-18 | CV100, PD12 | 68d | 0d |

| ID | WBS | Activity | Duration | Start | Finish | Predecessors | Total float | Free float |
| --- | --- | --- | --- | --- | --- | --- | --- | --- |
|  | 04 | **Module setting** |  | 2027-05-24 | 2027-08-31 |  |  |  |
| ST0 |  | Unit 01: set module (crew 1) | 5d | 2027-05-24 | 2027-05-28 | PD0, PR100 | 0d |  |
| ST1 |  | Unit 02: set module (crew 1) | 5d | 2027-05-31 | 2027-06-04 | PD1, PR100, ST0 | 0d |  |
| TX0 |  | Unit 01: set transformer | 2d | 2027-05-31 | 2027-06-01 | ST0, PR120 | 39d | 0d |
| ST2 |  | Unit 03: set module (crew 1) | 5d | 2027-06-07 | 2027-06-11 | PD2, PR100, ST1 | 0d |  |
| TX1 |  | Unit 02: set transformer | 2d | 2027-06-07 | 2027-06-08 | ST1, PR120 | 36d | 0d |
| ST3 |  | Unit 04: set module (crew 1) | 5d | 2027-06-14 | 2027-06-18 | PD3, PR100, ST2 | 0d |  |
| TX2 |  | Unit 03: set transformer | 2d | 2027-06-14 | 2027-06-15 | ST2, PR120 | 33d | 0d |
| ST4 |  | Unit 05: set module (crew 1) | 5d | 2027-06-21 | 2027-06-25 | PD4, PR100, ST3 | 0d |  |
| TX3 |  | Unit 04: set transformer | 2d | 2027-06-21 | 2027-06-22 | ST3, PR120 | 30d | 0d |
| ST5 |  | Unit 06: set module (crew 1) | 5d | 2027-06-28 | 2027-07-02 | PD5, PR100, ST4 | 0d |  |
| TX4 |  | Unit 05: set transformer | 2d | 2027-06-28 | 2027-06-29 | ST4, PR120 | 27d | 0d |
| ST6 |  | Unit 07: set module (crew 1) | 5d | 2027-07-05 | 2027-07-09 | PD6, PR100, ST5 | 0d |  |
| TX5 |  | Unit 06: set transformer | 2d | 2027-07-05 | 2027-07-06 | ST5, PR120 | 24d | 0d |
| ST7 |  | Unit 08: set module (crew 1) | 5d | 2027-07-12 | 2027-07-16 | PD7, PR110, ST6 | 0d |  |
| TX6 |  | Unit 07: set transformer | 2d | 2027-07-12 | 2027-07-13 | ST6, PR120 | 21d | 0d |
| ST8 |  | Unit 09: set module (crew 1) | 5d | 2027-07-19 | 2027-07-23 | PD8, PR110, ST7 | 0d |  |
| TX7 |  | Unit 08: set transformer | 2d | 2027-07-19 | 2027-07-20 | ST7, PR120 | 18d | 0d |
| ST9 |  | Unit 10: set module (crew 1) | 5d | 2027-07-26 | 2027-07-30 | PD9, PR110, ST8 | 0d |  |
| TX8 |  | Unit 09: set transformer | 2d | 2027-07-26 | 2027-07-27 | ST8, PR120 | 15d | 0d |
| ST10 |  | Unit 11: set module (crew 1) | 5d | 2027-08-02 | 2027-08-06 | PD10, PR110, ST9 | 0d |  |
| TX9 |  | Unit 10: set transformer | 2d | 2027-08-02 | 2027-08-03 | ST9, PR120 | 12d | 0d |
| ST11 |  | Unit 12: set module (crew 1) | 5d | 2027-08-09 | 2027-08-13 | PD11, PR110, ST10 | 0d |  |
| TX10 |  | Unit 11: set transformer | 2d | 2027-08-09 | 2027-08-10 | ST10, PR120 | 9d | 0d |
| ST12 |  | Unit 13: set module (crew 1) | 5d | 2027-08-16 | 2027-08-20 | PD12, PR110, ST11 | 0d |  |
| TX11 |  | Unit 12: set transformer | 2d | 2027-08-16 | 2027-08-17 | ST11, PR120 | 6d | 0d |
| ST13 |  | Unit 14: set module (crew 1) | 5d | 2027-08-23 | 2027-08-27 | PD13, PR110, ST12 | 0d |  |
| TX12 |  | Unit 13: set transformer | 2d | 2027-08-23 | 2027-08-24 | ST12, PR120 | 3d | 0d |
| TX13 |  | Unit 14: set transformer | 2d | 2027-08-30 | 2027-08-31 | ST13, PR120 | 0d |  |

| ID | WBS | Activity | Duration | Start | Finish | Predecessors | Total float | Free float |
| --- | --- | --- | --- | --- | --- | --- | --- | --- |
|  | 05 | **Terminations & testing** |  | 2027-06-02 | 2027-09-08 |  |  |  |
| TM0 |  | Unit 01: terminate MV & LV cables | 4d | 2027-06-02 | 2027-06-07 | TX0, CV110 | 39d | 0d |
| TS0 |  | Unit 01: test & energize | 2d | 2027-06-08 | 2027-06-09 | TM0 | 39d | 0d |
| TM1 |  | Unit 02: terminate MV & LV cables | 4d | 2027-06-09 | 2027-06-14 | TX1, CV110 | 36d | 0d |
| TS1 |  | Unit 02: test & energize | 2d | 2027-06-15 | 2027-06-16 | TM1, TS0 | 36d | 0d |
| TM2 |  | Unit 03: terminate MV & LV cables | 4d | 2027-06-16 | 2027-06-21 | TX2, CV110 | 33d | 0d |
| TS2 |  | Unit 03: test & energize | 2d | 2027-06-22 | 2027-06-23 | TM2, TS1 | 33d | 0d |
| TM3 |  | Unit 04: terminate MV & LV cables | 4d | 2027-06-23 | 2027-06-28 | TX3, CV110 | 30d | 0d |
| TS3 |  | Unit 04: test & energize | 2d | 2027-06-29 | 2027-06-30 | TM3, TS2 | 30d | 0d |
| TM4 |  | Unit 05: terminate MV & LV cables | 4d | 2027-06-30 | 2027-07-05 | TX4, CV110 | 27d | 0d |
| TS4 |  | Unit 05: test & energize | 2d | 2027-07-06 | 2027-07-07 | TM4, TS3 | 27d | 0d |
| TM5 |  | Unit 06: terminate MV & LV cables | 4d | 2027-07-07 | 2027-07-12 | TX5, CV110 | 24d | 0d |
| TS5 |  | Unit 06: test & energize | 2d | 2027-07-13 | 2027-07-14 | TM5, TS4 | 24d | 0d |
| TM6 |  | Unit 07: terminate MV & LV cables | 4d | 2027-07-14 | 2027-07-19 | TX6, CV110 | 21d | 0d |
| TS6 |  | Unit 07: test & energize | 2d | 2027-07-20 | 2027-07-21 | TM6, TS5 | 21d | 0d |
| TM7 |  | Unit 08: terminate MV & LV cables | 4d | 2027-07-21 | 2027-07-26 | TX7, CV110 | 18d | 0d |
| TS7 |  | Unit 08: test & energize | 2d | 2027-07-27 | 2027-07-28 | TM7, TS6 | 18d | 0d |
| TM8 |  | Unit 09: terminate MV & LV cables | 4d | 2027-07-28 | 2027-08-02 | TX8, CV110 | 15d | 0d |
| TS8 |  | Unit 09: test & energize | 2d | 2027-08-03 | 2027-08-04 | TM8, TS7 | 15d | 0d |
| TM9 |  | Unit 10: terminate MV & LV cables | 4d | 2027-08-04 | 2027-08-09 | TX9, CV110 | 12d | 0d |
| TS9 |  | Unit 10: test & energize | 2d | 2027-08-10 | 2027-08-11 | TM9, TS8 | 12d | 0d |
| TM10 |  | Unit 11: terminate MV & LV cables | 4d | 2027-08-11 | 2027-08-16 | TX10, CV110 | 9d | 0d |
| TS10 |  | Unit 11: test & energize | 2d | 2027-08-17 | 2027-08-18 | TM10, TS9 | 9d | 0d |
| TM11 |  | Unit 12: terminate MV & LV cables | 4d | 2027-08-18 | 2027-08-23 | TX11, CV110 | 6d | 0d |
| TS11 |  | Unit 12: test & energize | 2d | 2027-08-24 | 2027-08-25 | TM11, TS10 | 6d | 0d |
| TM12 |  | Unit 13: terminate MV & LV cables | 4d | 2027-08-25 | 2027-08-30 | TX12, CV110 | 3d | 0d |
| TS12 |  | Unit 13: test & energize | 2d | 2027-08-31 | 2027-09-01 | TM12, TS11 | 3d | 0d |
| TM13 |  | Unit 14: terminate MV & LV cables | 4d | 2027-09-01 | 2027-09-06 | TX13, CV110 | 0d |  |
| TS13 |  | Unit 14: test & energize | 2d | 2027-09-07 | 2027-09-08 | TM13, TS12 | 0d |  |
