# Hotel, 4-Storey Wood Frame

Schedule from Primavera P6, 2027-03-01 to 2027-11-18, data date 2027-03-01.

## Calendars

- 5-day x 8h: Mon-Fri 08:00-16:00; Sat-Sun off.

## Schedule

| ID | WBS | Activity | Type | Duration | Start | Finish | Predecessors | Total float | Free float |
| --- | --- | --- | --- | --- | --- | --- | --- | --- | --- |
|  | 01 | **Milestones** |  |  | 2027-03-01 | 2027-11-18 |  |  |  |
| MS000 |  | Notice to Proceed | milestone | 0d | 2027-03-01 | 2027-03-01 |  | 0d |  |
| DRY |  | Building dried-in | milestone | 0d | 2027-06-28 | 2027-06-28 | RF0, RF1 | 0d |  |
| MS999 |  | Certificate of occupancy | milestone | 0d | 2027-11-18 | 2027-11-18 | CX100 | 0d |  |
|  | 02 | **Procurement** |  |  | 2027-03-01 | 2027-04-23 |  |  |  |
| PR100 |  | Wall panels & trusses: shop drawings & fabrication |  | 40d | 2027-03-01 | 2027-04-23 | MS000 | 0d |  |
|  | 03 | **Substructure** |  |  | 2027-03-01 | 2027-04-07 |  |  |  |
| FD100 |  | Foundations & underground utilities |  | 20d | 2027-03-01 | 2027-03-26 | MS000 | 12d | 0d |
| FD110 |  | Slab on grade |  | 8d | 2027-03-29 | 2027-04-07 | FD100 | 12d | 0d |
|  | 04 | **Wood frame** |  |  | 2027-04-26 | 2027-06-18 |  |  |  |
| F00 |  | Level 1 wing A: wood framing & sheathing |  | 7d | 2027-04-26 | 2027-05-04 | FD110, PR100 | 0d |  |
| F01 |  | Level 1 wing B: wood framing & sheathing |  | 7d | 2027-05-05 | 2027-05-13 | FD110, F00 | 0d |  |
| F10 |  | Level 2 wing A: wood framing & sheathing |  | 7d | 2027-05-05 | 2027-05-13 | F00 | 0d |  |
| F11 |  | Level 2 wing B: wood framing & sheathing |  | 7d | 2027-05-14 | 2027-05-24 | F01, F10 | 0d |  |
| F20 |  | Level 3 wing A: wood framing & sheathing |  | 7d | 2027-05-14 | 2027-05-24 | F10 | 0d |  |
| F21 |  | Level 3 wing B: wood framing & sheathing |  | 7d | 2027-05-25 | 2027-06-02 | F11, F20 | 0d |  |
| F30 |  | Level 4 wing A: wood framing & sheathing |  | 7d | 2027-05-25 | 2027-06-02 | F20 | 0d |  |
| F31 |  | Level 4 wing B: wood framing & sheathing |  | 7d | 2027-06-03 | 2027-06-11 | F21, F30 | 0d |  |
| TR0 |  | Wing A: roof trusses |  | 5d | 2027-06-03 | 2027-06-09 | F30 | 2d | 0d |
| TR1 |  | Wing B: roof trusses |  | 5d | 2027-06-14 | 2027-06-18 | F31, TR0 | 0d |  |
|  | 05 | **Envelope** |  |  | 2027-05-05 | 2027-06-28 |  |  |  |
| E00 |  | Level 1 wing A: windows, WRB & siding |  | 6d | 2027-05-05 | 2027-05-12 | F00 | 97d | 0d |
| E01 |  | Level 1 wing B: windows, WRB & siding |  | 6d | 2027-05-14 | 2027-05-21 | F01, E00 | 96d | 0d |
| E10 |  | Level 2 wing A: windows, WRB & siding |  | 6d | 2027-05-14 | 2027-05-21 | F10, E00 | 96d | 0d |
| E11 |  | Level 2 wing B: windows, WRB & siding |  | 6d | 2027-05-25 | 2027-06-01 | F11, E01, E10 | 95d | 0d |
| E20 |  | Level 3 wing A: windows, WRB & siding |  | 6d | 2027-05-25 | 2027-06-01 | F20, E10 | 95d | 0d |
| E21 |  | Level 3 wing B: windows, WRB & siding |  | 6d | 2027-06-03 | 2027-06-10 | F21, E11, E20 | 94d | 0d |
| E30 |  | Level 4 wing A: windows, WRB & siding |  | 6d | 2027-06-03 | 2027-06-10 | F30, E20 | 94d | 0d |
| RF0 |  | Wing A: roofing |  | 6d | 2027-06-10 | 2027-06-17 | TR0 | 7d | 0d |
| E31 |  | Level 4 wing B: windows, WRB & siding |  | 6d | 2027-06-14 | 2027-06-21 | F31, E21, E30 | 93d | 0d |
| RF1 |  | Wing B: roofing |  | 6d | 2027-06-21 | 2027-06-28 | TR1 | 0d |  |

| ID | WBS | Activity | Duration | Start | Finish | Predecessors | Total float | Free float |
| --- | --- | --- | --- | --- | --- | --- | --- | --- |
|  | 06 | **MEP & finishes** |  | 2027-06-29 | 2027-10-28 |  |  |  |
| M00 |  | Level 1 wing A: MEP rough-in | 8d | 2027-06-29 | 2027-07-08 | F00, DRY | 0d |  |
| I00 |  | Level 1 wing A: drywall, finishes & FF&E | 10d | 2027-07-09 | 2027-07-22 | M00 | 0d |  |
| M01 |  | Level 1 wing B: MEP rough-in | 8d | 2027-07-09 | 2027-07-20 | F01, DRY, M00 | 2d | 0d |
| M10 |  | Level 2 wing A: MEP rough-in | 8d | 2027-07-21 | 2027-07-30 | F10, DRY, M01 | 4d | 0d |
| I01 |  | Level 1 wing B: drywall, finishes & FF&E | 10d | 2027-07-23 | 2027-08-05 | M01, I00 | 0d |  |
| M11 |  | Level 2 wing B: MEP rough-in | 8d | 2027-08-02 | 2027-08-11 | F11, DRY, M10 | 6d | 0d |
| I10 |  | Level 2 wing A: drywall, finishes & FF&E | 10d | 2027-08-06 | 2027-08-19 | M10, I01 | 0d |  |
| M20 |  | Level 3 wing A: MEP rough-in | 8d | 2027-08-12 | 2027-08-23 | F20, DRY, M11 | 8d | 0d |
| I11 |  | Level 2 wing B: drywall, finishes & FF&E | 10d | 2027-08-20 | 2027-09-02 | M11, I10 | 0d |  |
| M21 |  | Level 3 wing B: MEP rough-in | 8d | 2027-08-24 | 2027-09-02 | F21, DRY, M20 | 10d | 0d |
| I20 |  | Level 3 wing A: drywall, finishes & FF&E | 10d | 2027-09-03 | 2027-09-16 | M20, I11 | 0d |  |
| M30 |  | Level 4 wing A: MEP rough-in | 8d | 2027-09-03 | 2027-09-14 | F30, DRY, M21 | 12d | 0d |
| M31 |  | Level 4 wing B: MEP rough-in | 8d | 2027-09-15 | 2027-09-24 | F31, DRY, M30 | 14d | 0d |
| I21 |  | Level 3 wing B: drywall, finishes & FF&E | 10d | 2027-09-17 | 2027-09-30 | M21, I20 | 0d |  |
| I30 |  | Level 4 wing A: drywall, finishes & FF&E | 10d | 2027-10-01 | 2027-10-14 | M30, I21 | 0d |  |
| I31 |  | Level 4 wing B: drywall, finishes & FF&E | 10d | 2027-10-15 | 2027-10-28 | M31, I30 | 0d |  |
|  | 07 | **Close-out** |  | 2027-10-29 | 2027-11-18 |  |  |  |
| CX100 |  | Life-safety tests, inspections & punch list | 15d | 2027-10-29 | 2027-11-18 | I31, E31 | 0d |  |
